# Program_powtorkowy_praca_dyplomowa

Schedule from ProjectLibre, 2021-01-20 to 2021-05-28, 3 hours a day.

## Calendars

- Standard: Mon-Fri 08:00-12:00, 13:00-17:00; Sat-Sun off.
- mine: Mon-Fri 08:00-10:00, 18:00-19:00; Sat-Sun off. Exceptions (off unless hours are given): 2021-01-30 08:00-10:00, 12:00-13:00, 2021-01-31, 2021-02-27 to 2021-02-28 08:00-10:00, 12:00-13:00.

## Resources

| Resource | Group |
| --- | --- |
| Unassigned |  |
| Robert G. | Pracownik |
| Artur K. |  |

## Schedule

| ID | WBS | Task | Duration | Start | Finish | Predecessors | Baseline start | Baseline finish | Deadline | Calendar | Resources |
| --- | --- | --- | --- | --- | --- | --- | --- | --- | --- | --- | --- |
| 1 | 1 | **Projekt Programu Powtórkowego** | 245.67d? | 2021-01-20 08:00 | 2021-05-28 09:00 |  | 2021-01-20 08:00 | 2021-05-28 09:00 |  |  |  |
| 2 | 1.1 | **Prace przygotowawcze** | 192d? | 2021-01-20 08:00 | 2021-04-29 18:00 |  | 2021-01-20 08:00 | 2021-04-29 18:00 | 2021-01-24 17:00 |  |  |
| 3 | 1.1.1 | **Przygotowanie do pisania pracy** | 15.67d | 2021-04-22 09:00 | 2021-04-29 18:00 |  | 2021-04-22 09:00 | 2021-04-29 18:00 | 2021-01-24 17:00 |  |  |
| 4 | 1.1.1.1 | Konfiguracja LaTeX Overleaf | 0.67d | 2021-04-22 09:00 | 2021-04-22 19:00 | 28 | 2021-04-22 09:00 | 2021-04-22 19:00 | 2021-01-24 17:00 | mine | Robert G. |
| 5 | 1.1.1.2 | Przygotowanie szablonu LaTeX | 0.67d | 2021-04-23 08:00 | 2021-04-23 18:00 | 4 | 2021-04-23 08:00 | 2021-04-23 18:00 |  | mine | Robert G. |
| 6 | 1.1.1.3 | Przygotowanie strony tytułowej | 0.67d | 2021-04-23 18:00 | 2021-04-26 09:00 | 5 | 2021-04-23 18:00 | 2021-04-26 09:00 |  | mine | Robert G. |
| 7 | 1.1.1.4 | Przygotowanie spisu treści | 1.33d | 2021-04-26 09:00 | 2021-04-27 18:00 | 6 | 2021-04-26 09:00 | 2021-04-27 18:00 |  | mine | Robert G. |
| 8 | 1.1.1.5 | Abstract | 1.33d | 2021-04-27 18:00 | 2021-04-28 19:00 | 7 | 2021-04-27 18:00 | 2021-04-28 19:00 |  | mine | Robert G. |
| 9 | 1.1.1.6 | Abstract po angielsku | 0.67d | 2021-04-29 08:00 | 2021-04-29 18:00 | 8 | 2021-04-29 08:00 | 2021-04-29 18:00 |  | mine | Robert G. |
| 10 | 1.1.2 | **Przygotowanie merytoryczne** | 13.33d | 2021-01-20 08:00 | 2021-01-26 19:00 |  | 2021-01-20 08:00 | 2021-01-26 19:00 |  |  |  |
| 11 | 1.1.2.1 | **Raport o istniejących systemach** | 5.33d | 2021-01-25 08:00 | 2021-01-26 19:00 |  | 2021-01-25 08:00 | 2021-01-26 19:00 |  |  |  |
| 12 | 1.1.2.1.1 | Lista istniejących systemów | 0.33d | 2021-01-25 08:00 | 2021-01-25 09:00 | 22 | 2021-01-25 08:00 | 2021-01-25 09:00 |  | mine | Robert G. |
| 13 | 1.1.2.1.2 | **Charakterystyka istniejących systemów** | 5d | 2021-01-25 09:00 | 2021-01-26 19:00 |  | 2021-01-25 09:00 | 2021-01-26 19:00 |  |  |  |
| 14 | 1.1.2.1.2.1 | Zalety | 0.67d | 2021-01-25 09:00 | 2021-01-25 19:00 | 12 | 2021-01-25 09:00 | 2021-01-25 19:00 |  | mine | Robert G. |
| 15 | 1.1.2.1.2.2 | Wady | 0.67d | 2021-01-26 08:00 | 2021-01-26 18:00 | 14 | 2021-01-26 08:00 | 2021-01-26 18:00 |  | mine | Robert G. |
| 16 | 1.1.2.1.2.3 | Wnioski | 0.33d | 2021-01-26 18:00 | 2021-01-26 19:00 | 15 | 2021-01-26 18:00 | 2021-01-26 19:00 |  | mine | Robert G. |
| 17 | 1.1.2.2 | **Przegląd literatury o nauczaniu języków** | 8d | 2021-01-20 08:00 | 2021-01-22 19:00 |  | 2021-01-20 08:00 | 2021-01-22 19:00 |  |  |  |
| 18 | 1.1.2.2.1 | Przygotowanie listy prac naukowych | 0.67d | 2021-01-20 08:00 | 2021-01-20 18:00 |  | 2021-01-20 08:00 | 2021-01-20 18:00 |  | mine | Robert G. |
| 19 | 1.1.2.2.2 | Lektura wytypowanych opracowan | 1.33d | 2021-01-20 18:00 | 2021-01-21 19:00 | 18 | 2021-01-20 18:00 | 2021-01-21 19:00 |  | mine | Robert G. |
| 20 | 1.1.2.2.3 | Podsumowanie - Rola pamięci w opanowaniu leksyki | 0.33d | 2021-01-22 08:00 | 2021-01-22 09:00 | 19 | 2021-01-22 08:00 | 2021-01-22 09:00 |  | mine | Robert G. |
| 21 | 1.1.2.2.4 | Podsumowanie - Uwarunkowania procesu zapamiętywania | 0.33d | 2021-01-22 09:00 | 2021-01-22 18:00 | 20 | 2021-01-22 09:00 | 2021-01-22 18:00 |  | mine | Robert G. |
| 22 | 1.1.2.2.5 | Podsumowanie - Krzywa zapominania - teoria i praktyka | 0.33d | 2021-01-22 18:00 | 2021-01-22 19:00 | 21 | 2021-01-22 18:00 | 2021-01-22 19:00 |  | mine | Robert G. |
| 23 | 1.1.3 | **Przegląd technologii** | 2.67d? | 2021-02-09 09:00 | 2021-02-10 09:00 |  | 2021-02-09 09:00 | 2021-02-10 09:00 |  |  |  |
| 24 | 1.1.3.1 | Przegląd techn. Frontendowej | 0.33d? | 2021-02-09 09:00 | 2021-02-09 18:00 | 37 | 2021-02-09 09:00 | 2021-02-09 18:00 |  | mine | Robert G. |
| 25 | 1.1.3.2 | Przegląd techn. Backendowej | 0.33d? | 2021-02-09 18:00 | 2021-02-09 19:00 | 24 | 2021-02-09 18:00 | 2021-02-09 19:00 |  | mine | Robert G. |
| 26 | 1.1.3.3 | Przegląd techn. Mobile | 0.33d? | 2021-02-10 08:00 | 2021-02-10 09:00 | 25 | 2021-02-10 08:00 | 2021-02-10 09:00 |  | mine | Robert G. |

| ID | WBS | Task | Duration | Start | Finish | Predecessors | Baseline start | Baseline finish | Constraint | Calendar | Resources |
| --- | --- | --- | --- | --- | --- | --- | --- | --- | --- | --- | --- |
| 27 | 1.2 | **Projekt architektury systemu** | 163d? | 2021-01-27 08:00 | 2021-04-22 09:00 |  | 2021-01-27 08:00 | 2021-04-22 09:00 |  |  |  |
| 28 | 1.2.1 | Nazwa systemu | 0.33d | 2021-04-22 07:00 | 2021-04-22 09:00 |  | 2021-04-22 07:00 | 2021-04-22 09:00 | start no earlier than 2021-04-22 07:00 | mine | Robert G. |
| 29 | 1.2.2 | **Opracowanie algorytmów systemu** | 8d? | 2021-01-27 08:00 | 2021-01-29 18:00 |  | 2021-01-27 08:00 | 2021-01-29 18:00 |  |  |  |
| 30 | 1.2.2.1 | Algorytm selekcji haseł do nauki | 1.33d? | 2021-01-27 08:00 | 2021-01-28 09:00 | 16 | 2021-01-27 08:00 | 2021-01-28 09:00 |  | mine | Robert G. |
| 31 | 1.2.2.2 | Algorytm wyznaczania powtórek | 1.33d? | 2021-01-28 09:00 | 2021-01-29 18:00 | 30 | 2021-01-28 09:00 | 2021-01-29 18:00 |  | mine | Robert G. |
| 32 | 1.2.3 | **Specyfikacja wymagań** | 5.33d? | 2021-02-01 08:00 | 2021-02-02 19:00 |  | 2021-02-01 08:00 | 2021-02-02 19:00 |  |  |  |
| 33 | 1.2.3.1 | Wymagania funkcjonalne | 1.33d? | 2021-02-01 08:00 | 2021-02-02 09:00 | 16 | 2021-02-01 08:00 | 2021-02-02 09:00 | start no earlier than 2021-02-01 08:00 | mine | Robert G. |
| 34 | 1.2.3.2 | Wymagania niefunkcjonalne | 0.67d? | 2021-02-02 09:00 | 2021-02-02 19:00 | 33 | 2021-02-02 09:00 | 2021-02-02 19:00 |  | mine | Robert G. |
| 35 | 1.2.4 | **Projekt interfejsu użytkownika** | 11d | 2021-02-03 08:00 | 2021-02-09 09:00 |  | 2021-02-03 08:00 | 2021-02-09 09:00 |  |  |  |
| 36 | 1.2.4.1 | Diagramy LOFI | 1.67d | 2021-02-03 08:00 | 2021-02-04 18:00 | 34 | 2021-02-03 08:00 | 2021-02-04 18:00 |  | mine | Robert G. |
| 37 | 1.2.4.2 | Projekty poszczegónych interfejsów | 2.67d | 2021-02-04 18:00 | 2021-02-09 09:00 | 36 | 2021-02-04 18:00 | 2021-02-09 09:00 |  | mine | Robert G. |
| 38 | 1.2.5 | **Wybór technologii** | 5d? | 2021-02-10 09:00 | 2021-02-11 18:00 |  | 2021-02-10 09:00 | 2021-02-11 18:00 |  |  |  |
| 39 | 1.2.5.1 | Wybór techn. Front-end | 0.33d? | 2021-02-10 09:00 | 2021-02-10 18:00 | 26 | 2021-02-10 09:00 | 2021-02-10 18:00 |  | mine | Robert G. |
| 40 | 1.2.5.2 | Wybór techn. Back-end | 0.33d? | 2021-02-10 18:00 | 2021-02-10 19:00 | 39 | 2021-02-10 18:00 | 2021-02-10 19:00 |  | mine | Robert G. |
| 41 | 1.2.5.3 | Wybór techn. Mobile | 0.33d? | 2021-02-11 08:00 | 2021-02-11 09:00 | 40 | 2021-02-11 08:00 | 2021-02-11 09:00 |  | mine | Robert G. |
| 42 | 1.2.5.4 | Wybór Bazy danych | 0.33d? | 2021-02-11 09:00 | 2021-02-11 18:00 | 41 | 2021-02-11 09:00 | 2021-02-11 18:00 |  | mine | Robert G. |
| 43 | 1.2.6 | **Model bazy danych** | 8d? | 2021-02-11 18:00 | 2021-02-16 19:00 |  | 2021-02-11 18:00 | 2021-02-16 19:00 |  |  |  |
| 44 | 1.2.6.1 | Diagramy ERD | 2d? | 2021-02-11 18:00 | 2021-02-15 18:00 | 42 | 2021-02-11 18:00 | 2021-02-15 18:00 |  | mine | Robert G. |
| 45 | 1.2.6.2 | Relacje | 1.33d? | 2021-02-15 18:00 | 2021-02-16 19:00 | 44 | 2021-02-15 18:00 | 2021-02-16 19:00 |  | mine | Robert G. |
| 46 | 1.3 | **Implementacja systemu** | 91d? | 2021-02-17 08:00 | 2021-04-06 09:00 |  | 2021-02-17 08:00 | 2021-04-06 09:00 |  |  |  |
| 47 | 1.3.1 | Implementacja Bazy danych | 1.33d | 2021-02-17 08:00 | 2021-02-18 09:00 | 31, 45 | 2021-02-17 08:00 | 2021-02-18 09:00 |  | mine | Robert G. |
| 48 | 1.3.2 | **Przygotowanie IDE** | 5d? | 2021-02-18 09:00 | 2021-02-19 18:00 |  | 2021-02-18 09:00 | 2021-02-19 18:00 |  |  |  |
| 49 | 1.3.2.1 | Konfiguracja IDE dla aplikacji webowej | 0.67d? | 2021-02-18 09:00 | 2021-02-18 19:00 | 47 | 2021-02-18 09:00 | 2021-02-18 19:00 |  | mine | Robert G. |
| 50 | 1.3.2.2 | Konfiguracja IDE dla aplikacji mobilnej | 0.67d? | 2021-02-19 08:00 | 2021-02-19 18:00 | 49 | 2021-02-19 08:00 | 2021-02-19 18:00 |  | mine | Robert G. |

| ID | WBS | Task | Duration | Start | Finish | Predecessors | Baseline start | Baseline finish | Calendar | Resources |
| --- | --- | --- | --- | --- | --- | --- | --- | --- | --- | --- |
| 51 | 1.3.3 | **Implementacja modułów systemu** | 77.67d? | 2021-02-19 18:00 | 2021-04-02 09:00 |  | 2021-02-19 18:00 | 2021-04-02 09:00 |  |  |
| 52 | 1.3.3.1 | **Implementacja modułów Back-end** | 66.67d? | 2021-02-19 18:00 | 2021-03-26 18:00 |  | 2021-02-19 18:00 | 2021-03-26 18:00 |  |  |
| 53 | 1.3.3.1.1 | **Obsługa konta użytkownika** | 11d? | 2021-02-19 18:00 | 2021-02-26 09:00 |  | 2021-02-19 18:00 | 2021-02-26 09:00 |  |  |
| 54 | 1.3.3.1.1.1 | Logowanie | 1.33d? | 2021-02-19 18:00 | 2021-02-22 19:00 | 50 | 2021-02-19 18:00 | 2021-02-22 19:00 | mine | Robert G. |
| 55 | 1.3.3.1.1.2 | Rejestracja | 1.33d? | 2021-02-23 08:00 | 2021-02-24 09:00 | 54 | 2021-02-23 08:00 | 2021-02-24 09:00 | mine | Robert G. |
| 56 | 1.3.3.1.1.3 | Usuwanie konta | 0.67d? | 2021-02-24 09:00 | 2021-02-24 19:00 | 55 | 2021-02-24 09:00 | 2021-02-24 19:00 | mine | Robert G. |
| 57 | 1.3.3.1.1.4 | Obsługa zespołów uczniów - klas | 1.33d? | 2021-02-25 08:00 | 2021-02-26 09:00 | 56 | 2021-02-25 08:00 | 2021-02-26 09:00 | mine | Robert G. |
| 58 | 1.3.3.1.2 | **Import danych** | 2.33d? | 2021-02-26 09:00 | 2021-02-28 12:00 |  | 2021-02-26 09:00 | 2021-02-28 12:00 |  |  |
| 59 | 1.3.3.1.2.1 | Import masowy | 1.33d? | 2021-02-26 09:00 | 2021-02-27 12:00 | 57 | 2021-02-26 09:00 | 2021-02-27 12:00 | mine | Robert G. |
| 60 | 1.3.3.1.2.2 | Import jednostkowy | 1d? | 2021-02-27 12:00 | 2021-02-28 12:00 | 59 | 2021-02-27 12:00 | 2021-02-28 12:00 | mine | Robert G. |
| 61 | 1.3.3.1.3 | Połączenie z bazą danych | 0.67d? | 2021-02-28 12:00 | 2021-03-01 09:00 | 60 | 2021-02-28 12:00 | 2021-03-01 09:00 | mine | Robert G. |
| 62 | 1.3.3.1.4 | **Zarządzanie uczniami** | 21d? | 2021-03-01 09:00 | 2021-03-10 19:00 |  | 2021-03-01 09:00 | 2021-03-10 19:00 |  |  |
| 63 | 1.3.3.1.4.1 | Zarządzanie składem klasy | 1.33d? | 2021-03-01 09:00 | 2021-03-02 18:00 | 61 | 2021-03-01 09:00 | 2021-03-02 18:00 | mine | Robert G. |
| 64 | 1.3.3.1.4.2 | Przydzielenie zestawów lekcyjnych | 1d? | 2021-03-02 18:00 | 2021-03-03 18:00 | 63 | 2021-03-02 18:00 | 2021-03-03 18:00 | mine | Robert G. |
| 65 | 1.3.3.1.4.3 | kontrola postępów | 1.33d? | 2021-03-03 18:00 | 2021-03-04 19:00 | 64 | 2021-03-03 18:00 | 2021-03-04 19:00 | mine | Robert G. |
| 66 | 1.3.3.1.4.4 | Przeprowadzanie testów zprawdzających | 2.67d? | 2021-03-05 08:00 | 2021-03-09 18:00 | 65 | 2021-03-05 08:00 | 2021-03-09 18:00 | mine | Robert G. |
| 67 | 1.3.3.1.4.5 | Kontakt z uczniem | 1.33d? | 2021-03-09 18:00 | 2021-03-10 19:00 | 66 | 2021-03-09 18:00 | 2021-03-10 19:00 | mine | Robert G. |
| 68 | 1.3.3.1.5 | **Implementacja algorytmów** | 8d? | 2021-03-11 08:00 | 2021-03-15 18:00 |  | 2021-03-11 08:00 | 2021-03-15 18:00 |  |  |
| 69 | 1.3.3.1.5.1 | Implementacja algorytmu selekcji haseł | 1.33d? | 2021-03-11 08:00 | 2021-03-12 09:00 | 67, 31 | 2021-03-11 08:00 | 2021-03-12 09:00 | mine | Robert G. |
| 70 | 1.3.3.1.5.2 | Implementacja algorytmu powtórek | 1.33d? | 2021-03-12 09:00 | 2021-03-15 18:00 | 69 | 2021-03-12 09:00 | 2021-03-15 18:00 | mine | Robert G. |
| 71 | 1.3.3.1.6 | **Faza nauki** | 8d? | 2021-03-15 18:00 | 2021-03-18 19:00 |  | 2021-03-15 18:00 | 2021-03-18 19:00 |  |  |
| 72 | 1.3.3.1.6.1 | Prezentacja materiału | 1.33d? | 2021-03-15 18:00 | 2021-03-16 19:00 | 70 | 2021-03-15 18:00 | 2021-03-16 19:00 | mine | Robert G. |
| 73 | 1.3.3.1.6.2 | Proces opanowania pamięciowego | 1.33d? | 2021-03-17 08:00 | 2021-03-18 09:00 | 72 | 2021-03-17 08:00 | 2021-03-18 09:00 | mine | Robert G. |
| 74 | 1.3.3.1.6.3 | Proces przeuczenia | 0.67d? | 2021-03-18 09:00 | 2021-03-18 19:00 | 73 | 2021-03-18 09:00 | 2021-03-18 19:00 | mine | Robert G. |
| 75 | 1.3.3.1.7 | Faza powtórki | 1d? | 2021-03-19 08:00 | 2021-03-19 19:00 | 74 | 2021-03-19 08:00 | 2021-03-19 19:00 | mine | Robert G. |
| 76 | 1.3.3.1.8 | Statystyki | 2.67d | 2021-03-22 08:00 | 2021-03-24 18:00 | 75 | 2021-03-22 08:00 | 2021-03-24 18:00 | mine | Robert G. |
| 77 | 1.3.3.1.9 | Eksport danych | 1d? | 2021-03-24 18:00 | 2021-03-25 18:00 | 76 | 2021-03-24 18:00 | 2021-03-25 18:00 | mine | Robert G. |
| 78 | 1.3.3.1.10 | Routing | 1d? | 2021-03-25 18:00 | 2021-03-26 18:00 | 77 | 2021-03-25 18:00 | 2021-03-26 18:00 | mine | Robert G. |
| 79 | 1.3.3.2 | Bezpieczeństwo | 2.67d | 2021-03-26 18:00 | 2021-03-31 09:00 | 78 | 2021-03-26 18:00 | 2021-03-31 09:00 | mine | Robert G. |

| ID | WBS | Task | Duration | Start | Finish | Predecessors | Baseline start | Baseline finish | Constraint | Deadline | Calendar | Resources |
| --- | --- | --- | --- | --- | --- | --- | --- | --- | --- | --- | --- | --- |
| 80 | 1.3.3.3 | **Implementacja modułów Front-end** | 5.33d? | 2021-03-31 09:00 | 2021-04-02 09:00 |  | 2021-03-31 09:00 | 2021-04-02 09:00 |  |  |  |  |
| 81 | 1.3.3.3.1 | Szablony widoków | 2d? | 2021-03-31 09:00 | 2021-04-02 09:00 | 79 | 2021-03-31 09:00 | 2021-04-02 09:00 |  |  | mine | Robert G. |
| 82 | 1.3.4 | **Wdrożenie systemu** | 5.33d? | 2021-04-02 09:00 | 2021-04-06 09:00 |  | 2021-04-02 09:00 | 2021-04-06 09:00 |  |  |  |  |
| 83 | 1.3.4.1 | Wybór hostingu | 0.67d? | 2021-04-02 09:00 | 2021-04-02 19:00 | 81 | 2021-04-02 09:00 | 2021-04-02 19:00 |  |  | mine | Robert G. |
| 84 | 1.3.4.2 | Konfiguracja bazy danych | 0.67d? | 2021-04-05 08:00 | 2021-04-05 18:00 | 83 | 2021-04-05 08:00 | 2021-04-05 18:00 |  |  | mine | Robert G. |
| 85 | 1.3.4.3 | Przeniesienie danych | 0.67d? | 2021-04-05 18:00 | 2021-04-06 09:00 | 84 | 2021-04-05 18:00 | 2021-04-06 09:00 |  |  | mine | Robert G. |
| 86 | 1.4 | **Testowanie systemu** | 26.67d? | 2021-04-06 09:00 | 2021-04-20 09:00 |  | 2021-04-06 09:00 | 2021-04-20 09:00 |  |  |  |  |
| 87 | 1.4.1 | Testy funkcjonalne | 3.33d? | 2021-04-06 09:00 | 2021-04-09 18:00 | 81, 85 | 2021-04-06 09:00 | 2021-04-09 18:00 |  |  | mine | Robert G. |
| 88 | 1.4.2 | Testy integracyjne | 2d? | 2021-04-09 18:00 | 2021-04-13 18:00 | 87 | 2021-04-09 18:00 | 2021-04-13 18:00 |  |  | mine | Robert G. |
| 89 | 1.4.3 | Testy akceptacyjne | 0.67d? | 2021-04-13 18:00 | 2021-04-14 09:00 | 88 | 2021-04-13 18:00 | 2021-04-14 09:00 |  |  | mine | Robert G. |
| 90 | 1.4.4 | Testy zabezpieczeń | 2d? | 2021-04-14 09:00 | 2021-04-16 09:00 | 89 | 2021-04-14 09:00 | 2021-04-16 09:00 |  |  | mine | Robert G. |
| 91 | 1.4.5 | Wprowadzenie poprawek | 2d | 2021-04-16 09:00 | 2021-04-20 09:00 | 90 | 2021-04-16 09:00 | 2021-04-20 09:00 |  |  | mine | Robert G. |
| 92 | 1.5 | **Wnioski** | 1.67d? | 2021-04-29 18:00 | 2021-05-03 09:00 |  | 2021-04-29 18:00 | 2021-05-03 09:00 |  |  | mine |  |
| 93 | 1.5.1 | Odniesienie do tematu pracy | 0.67d? | 2021-04-29 18:00 | 2021-04-30 09:00 | 9, 85, 91 | 2021-04-29 18:00 | 2021-04-30 09:00 |  |  | mine | Robert G. |
| 94 | 1.5.2 | **Ocena bieżącego stanu systemu** | 0.67d? | 2021-04-30 09:00 | 2021-04-30 19:00 |  | 2021-04-30 09:00 | 2021-04-30 19:00 |  |  | mine |  |
| 95 | 1.5.2.1 | Analiza zrealizowanych funkcjonalności | 0.33d? | 2021-04-30 09:00 | 2021-04-30 18:00 | 93 | 2021-04-30 09:00 | 2021-04-30 18:00 |  |  | mine | Robert G. |
| 96 | 1.5.2.2 | Analiza funkcjonalności niezrealizowanych | 0.33d? | 2021-04-30 18:00 | 2021-04-30 19:00 | 95 | 2021-04-30 18:00 | 2021-04-30 19:00 |  |  | mine | Robert G. |
| 97 | 1.5.3 | Kierunki dalszego rozwoju systemu | 0.33d? | 2021-05-03 08:00 | 2021-05-03 09:00 | 96 | 2021-05-03 08:00 | 2021-05-03 09:00 |  |  | mine | Robert G. |
| 98 | 1.6 | **Załączniki** | 50.67d? | 2021-05-03 09:00 | 2021-05-28 09:00 |  | 2021-05-03 09:00 | 2021-05-28 09:00 |  |  |  |  |
| 99 | 1.6.1 | Bibliografia | 0.33d? | 2021-05-03 09:00 | 2021-05-03 18:00 | 17, 97 | 2021-05-03 09:00 | 2021-05-03 18:00 |  |  | mine | Robert G. |
| 100 | 1.6.2 | Specyfikacja wymagań | 0.67d? | 2021-05-03 18:00 | 2021-05-04 09:00 | 95, 99 | 2021-05-03 18:00 | 2021-05-04 09:00 | start no earlier than 2021-05-03 09:00 |  | mine | Robert G. |
| 101 | 1.6.3 | Dokumentacja systemu | 2.67d? | 2021-05-04 09:00 | 2021-05-06 19:00 | 100 | 2021-05-04 09:00 | 2021-05-06 19:00 | start no earlier than 2021-05-04 08:00 |  | mine | Robert G. |
| 102 | 1.6.4 | Dokumentacja wdrożeniowa | 1.33d? | 2021-05-07 08:00 | 2021-05-10 09:00 | 101 | 2021-05-07 08:00 | 2021-05-10 09:00 | start no earlier than 2021-05-06 18:00 |  | mine | Robert G. |
| 103 | 1.6.5 | Dokumentacja powdrożeniowa | 1.33d? | 2021-05-14 18:00 | 2021-05-17 19:00 | 106, 102, 9 | 2021-05-14 18:00 | 2021-05-17 19:00 |  | 2021-05-31 17:00 | mine | Robert G. |

| ID | WBS | Task | Duration | Start | Finish | Predecessors | Baseline start | Baseline finish | Constraint | Calendar | Resources |
| --- | --- | --- | --- | --- | --- | --- | --- | --- | --- | --- | --- |
| 104 | 1.6.6 | **Istrukcja użytkowania** | 32.33d? | 2021-05-12 08:00 | 2021-05-28 09:00 |  | 2021-05-12 08:00 | 2021-05-28 09:00 |  |  |  |
| 105 | 1.6.6.1 | Instrukcja ucznia | 2d? | 2021-05-12 08:00 | 2021-05-13 19:00 | 97 | 2021-05-12 08:00 | 2021-05-13 19:00 | start no earlier than 2021-05-12 08:00 | mine | Robert G. |
| 106 | 1.6.6.2 | Instrukcja nauczyciela | 0.67d? | 2021-05-14 08:00 | 2021-05-14 18:00 | 105 | 2021-05-14 08:00 | 2021-05-14 18:00 |  | mine | Robert G. |
| 107 | 1.6.6.3 | Oddanie pracy dyplomowej | 0d? | 2021-05-28 09:00 | 2021-05-28 09:00 | 85, 103 | 2021-05-28 09:00 | 2021-05-28 09:00 | start no earlier than 2021-05-28 09:00 | mine |  |
