# Program_powtorkowy_praca_dyplomowa

Schedule from ProjectLibre, 2021-01-20 to 2021-06-14, 2 hours a day.

## Calendars

- Standard: Mon-Fri 08:00-12:00, 13:00-17:00; Sat-Sun off.
- mine: Mon-Fri 08:00-10:00; Sat-Sun off. Exceptions (off unless hours are given): 2021-01-30 08:00-10:00, 2021-01-31, 2021-02-27 to 2021-02-28 08:00-10:00.

## Resources

| Resource | Group |
| --- | --- |
| Unassigned |  |
| Robert G. | Pracownik |
| Artur K. |  |

## Schedule

| ID | WBS | Task | Duration | Start | Finish | Predecessors | Constraint | Deadline | Calendar | Resources |
| --- | --- | --- | --- | --- | --- | --- | --- | --- | --- | --- |
| 1 | 1 | **Projekt Programu Powtórkowego** | 413d? | 2021-01-20 | 2021-06-14 |  |  |  |  |  |
| 2 | 1.1 | **Prace przygotowawcze** | 116.5d? | 2021-01-20 | 2021-03-02 |  |  | 2021-01-24 |  |  |
| 3 | 1.1.1 | **Przygotowanie do pisania pracy** | 24d | 2021-02-22 | 2021-03-02 |  |  | 2021-01-24 |  |  |
| 4 | 1.1.1.1 | Konfiguracja LaTeX Overleaf | 1d | 2021-02-22 | 2021-02-23 | 28 | start no earlier than 2021-02-22 | 2021-01-24 | mine | Robert G. |
| 5 | 1.1.1.2 | Przygotowanie szablonu LaTeX | 1d | 2021-02-23 | 2021-02-24 | 4 |  |  | mine | Robert G. |
| 6 | 1.1.1.3 | Przygotowanie strony tytułowej | 1d | 2021-02-24 | 2021-02-25 | 5 |  |  | mine | Robert G. |
| 7 | 1.1.1.4 | Przygotowanie spisu treści | 2d | 2021-02-25 | 2021-02-27 | 6 |  |  | mine | Robert G. |
| 8 | 1.1.1.5 | Abstract | 2d | 2021-02-27 | 2021-03-01 | 7 |  |  | mine | Robert G. |
| 9 | 1.1.1.6 | Abstract po angielsku | 1d | 2021-03-01 | 2021-03-02 | 8 |  |  | mine | Robert G. |
| 10 | 1.1.2 | **Przygotowanie merytoryczne** | 28.5d | 2021-01-20 | 2021-01-29 |  |  |  |  |  |
| 11 | 1.1.2.1 | **Raport o istniejących systemach** | 12d | 2021-01-26 | 2021-01-29 |  |  |  |  |  |
| 12 | 1.1.2.1.1 | Lista istniejących systemów | 0.5d | 2021-01-26 | 2021-01-26 | 22 |  |  | mine | Robert G. |
| 13 | 1.1.2.1.2 | **Charakterystyka istniejących systemów** | 8.5d | 2021-01-27 | 2021-01-29 |  |  |  |  |  |
| 14 | 1.1.2.1.2.1 | Zalety | 1d | 2021-01-27 | 2021-01-27 | 12 |  |  | mine | Robert G. |
| 15 | 1.1.2.1.2.2 | Wady | 1d | 2021-01-28 | 2021-01-28 | 14 |  |  | mine | Robert G. |
| 16 | 1.1.2.1.2.3 | Wnioski | 0.5d | 2021-01-29 | 2021-01-29 | 15 |  |  | mine | Robert G. |
| 17 | 1.1.2.2 | **Przegląd literatury o nauczaniu języków** | 16.5d | 2021-01-20 | 2021-01-26 |  |  |  |  |  |
| 18 | 1.1.2.2.1 | Przygotowanie listy prac naukowych | 1d | 2021-01-20 | 2021-01-20 |  |  |  | mine | Robert G. |
| 19 | 1.1.2.2.2 | Lektura wytypowanych opracowan | 2d | 2021-01-21 | 2021-01-22 | 18 |  |  | mine | Robert G. |
| 20 | 1.1.2.2.3 | Podsumowanie - Rola pamięci w opanowaniu leksyki | 0.5d | 2021-01-25 | 2021-01-25 | 19 |  |  | mine | Robert G. |
| 21 | 1.1.2.2.4 | Podsumowanie - Uwarunkowania procesu zapamiętywania | 0.5d | 2021-01-25 | 2021-01-25 | 20 |  |  | mine | Robert G. |
| 22 | 1.1.2.2.5 | Podsumowanie - Krzywa zapominania - teoria i praktyka | 0.5d | 2021-01-26 | 2021-01-26 | 21 |  |  | mine | Robert G. |
| 23 | 1.1.3 | **Przegląd technologii** | 4.5d? | 2021-02-10 | 2021-02-11 |  |  |  |  |  |
| 24 | 1.1.3.1 | Przegląd techn. Frontendowej | 0.5d? | 2021-02-10 | 2021-02-10 | 37 |  |  | mine | Robert G. |
| 25 | 1.1.3.2 | Przegląd techn. Backendowej | 0.5d? | 2021-02-11 | 2021-02-11 | 24 |  |  | mine | Robert G. |
| 26 | 1.1.3.3 | Przegląd techn. Mobile | 0.5d? | 2021-02-11 | 2021-02-11 | 25 |  |  | mine | Robert G. |

| ID | WBS | Task | Duration | Start | Finish | Predecessors | Constraint | Calendar | Resources |
| --- | --- | --- | --- | --- | --- | --- | --- | --- | --- |
| 27 | 1.2 | **Projekt architektury systemu** | 100.5d? | 2021-01-29 | 2021-03-05 |  |  |  |  |
| 28 | 1.2.1 | Nazwa systemu | 0.5d | 2021-02-22 | 2021-02-22 |  | start no earlier than 2021-02-22 | mine | Robert G. |
| 29 | 1.2.2 | **Opracowanie algorytmów systemu** | 13d? | 2021-03-02 | 2021-03-05 |  |  |  |  |
| 30 | 1.2.2.1 | Algorytm selekcji haseł do nauki | 2d? | 2021-03-02 | 2021-03-03 | 16 | start no earlier than 2021-03-02 | mine | Robert G. |
| 31 | 1.2.2.2 | Algorytm wyznaczania powtórek | 2d? | 2021-03-04 | 2021-03-05 | 30 |  | mine | Robert G. |
| 32 | 1.2.3 | **Specyfikacja wymagań** | 8d? | 2021-01-29 | 2021-02-02 |  |  |  |  |
| 33 | 1.2.3.1 | Wymagania funkcjonalne | 2d? | 2021-01-29 | 2021-02-01 | 16 |  | mine | Robert G. |
| 34 | 1.2.3.2 | Wymagania niefunkcjonalne | 1d? | 2021-02-01 | 2021-02-02 | 33 |  | mine | Robert G. |
| 35 | 1.2.4 | **Projekt interfejsu użytkownika** | 24d | 2021-02-02 | 2021-02-10 |  |  |  |  |
| 36 | 1.2.4.1 | Diagramy LOFI | 2d | 2021-02-02 | 2021-02-04 | 34 |  | mine | Robert G. |
| 37 | 1.2.4.2 | Projekty poszczegónych interfejsów | 4d | 2021-02-04 | 2021-02-10 | 36 |  | mine | Robert G. |
| 38 | 1.2.5 | **Wybór technologii** | 5d? | 2021-02-12 | 2021-02-15 |  |  |  |  |
| 39 | 1.2.5.1 | Wybór techn. Front-end | 0.5d? | 2021-02-12 | 2021-02-12 | 26 |  | mine | Robert G. |
| 40 | 1.2.5.2 | Wybór techn. Back-end | 0.5d? | 2021-02-12 | 2021-02-12 | 39 |  | mine | Robert G. |
| 41 | 1.2.5.3 | Wybór techn. Mobile | 0.5d? | 2021-02-15 | 2021-02-15 | 40 |  | mine | Robert G. |
| 42 | 1.2.5.4 | Wybór Bazy danych | 0.5d? | 2021-02-15 | 2021-02-15 | 41 |  | mine | Robert G. |
| 43 | 1.2.6 | **Model bazy danych** | 13d? | 2021-02-16 | 2021-02-19 |  |  |  |  |
| 44 | 1.2.6.1 | Diagramy ERD | 3d? | 2021-02-16 | 2021-02-18 | 42 |  | mine | Robert G. |
| 45 | 1.2.6.2 | Relacje | 1d? | 2021-02-19 | 2021-02-19 | 44 | start no earlier than 2021-02-19 | mine | Robert G. |
| 46 | 1.3 | **Implementacja systemu** | 213d? | 2021-03-08 | 2021-05-20 |  |  |  |  |
| 47 | 1.3.1 | Implementacja Bazy danych | 2d | 2021-03-08 | 2021-03-09 | 31, 45 |  | mine | Robert G. |
| 48 | 1.3.2 | **Przygotowanie IDE** | 5d? | 2021-03-10 | 2021-03-11 |  |  |  |  |
| 49 | 1.3.2.1 | Konfiguracja IDE dla aplikacji webowej | 1d? | 2021-03-10 | 2021-03-10 | 47 |  | mine | Robert G. |
| 50 | 1.3.2.2 | Konfiguracja IDE dla aplikacji mobilnej | 1d? | 2021-03-11 | 2021-03-11 | 49 |  | mine | Robert G. |

| ID | WBS | Task | Duration | Start | Finish | Predecessors | Calendar | Resources |
| --- | --- | --- | --- | --- | --- | --- | --- | --- |
| 51 | 1.3.3 | **Implementacja modułów systemu** | 185d? | 2021-03-12 | 2021-05-17 |  |  |  |
| 52 | 1.3.3.1 | **Implementacja modułów Back-end** | 157d? | 2021-03-12 | 2021-05-06 |  |  |  |
| 53 | 1.3.3.1.1 | **Obsługa konta użytkownika** | 25d? | 2021-03-12 | 2021-03-22 |  |  |  |
| 54 | 1.3.3.1.1.1 | Logowanie | 2d? | 2021-03-12 | 2021-03-15 | 50 | mine | Robert G. |
| 55 | 1.3.3.1.1.2 | Rejestracja | 2d? | 2021-03-16 | 2021-03-17 | 54 | mine | Robert G. |
| 56 | 1.3.3.1.1.3 | Usuwanie konta | 1d? | 2021-03-18 | 2021-03-18 | 55 | mine | Robert G. |
| 57 | 1.3.3.1.1.4 | Obsługa zespołów uczniów - klas | 2d? | 2021-03-19 | 2021-03-22 | 56 | mine | Robert G. |
| 58 | 1.3.3.1.2 | **Import danych** | 12.5d? | 2021-03-23 | 2021-03-26 |  |  |  |
| 59 | 1.3.3.1.2.1 | Import masowy | 2d? | 2021-03-23 | 2021-03-24 | 57 | mine | Robert G. |
| 60 | 1.3.3.1.2.2 | Import jednostkowy | 1.5d? | 2021-03-25 | 2021-03-26 | 59 | mine | Robert G. |
| 61 | 1.3.3.1.3 | Połączenie z bazą danych | 1d? | 2021-03-26 | 2021-03-29 | 60 | mine | Robert G. |
| 62 | 1.3.3.1.4 | **Zarządzanie uczniami** | 44d? | 2021-03-29 | 2021-04-13 |  |  |  |
| 63 | 1.3.3.1.4.1 | Zarządzanie składem klasy | 2d? | 2021-03-29 | 2021-03-31 | 61 | mine | Robert G. |
| 64 | 1.3.3.1.4.2 | Przydzielenie zestawów lekcyjnych | 1d? | 2021-03-31 | 2021-04-01 | 63 | mine | Robert G. |
| 65 | 1.3.3.1.4.3 | kontrola postępów | 2d? | 2021-04-01 | 2021-04-05 | 64 | mine | Robert G. |
| 66 | 1.3.3.1.4.4 | Przeprowadzanie testów zprawdzających | 4d? | 2021-04-05 | 2021-04-09 | 65 | mine | Robert G. |
| 67 | 1.3.3.1.4.5 | Kontakt z uczniem | 2d? | 2021-04-09 | 2021-04-13 | 66 | mine | Robert G. |
| 68 | 1.3.3.1.5 | **Implementacja algorytmów** | 16d? | 2021-04-13 | 2021-04-19 |  |  |  |
| 69 | 1.3.3.1.5.1 | Implementacja algorytmu selekcji haseł | 2d? | 2021-04-13 | 2021-04-15 | 67, 31 | mine | Robert G. |
| 70 | 1.3.3.1.5.2 | Implementacja algorytmu powtórek | 2d? | 2021-04-15 | 2021-04-19 | 69 | mine | Robert G. |
| 71 | 1.3.3.1.6 | **Faza nauki** | 20d? | 2021-04-19 | 2021-04-26 |  |  |  |
| 72 | 1.3.3.1.6.1 | Prezentacja materiału | 2d? | 2021-04-19 | 2021-04-21 | 70 | mine | Robert G. |
| 73 | 1.3.3.1.6.2 | Proces opanowania pamięciowego | 2d? | 2021-04-21 | 2021-04-23 | 72 | mine | Robert G. |
| 74 | 1.3.3.1.6.3 | Proces przeuczenia | 1d? | 2021-04-23 | 2021-04-26 | 73 | mine | Robert G. |
| 75 | 1.3.3.1.7 | Faza powtórki | 1.5d? | 2021-04-26 | 2021-04-27 | 74 | mine | Robert G. |
| 76 | 1.3.3.1.8 | Statystyki | 4d | 2021-04-28 | 2021-05-03 | 75 | mine | Robert G. |
| 77 | 1.3.3.1.9 | Eksport danych | 1.5d? | 2021-05-04 | 2021-05-05 | 76 | mine | Robert G. |
| 78 | 1.3.3.1.10 | Routing | 1.5d? | 2021-05-05 | 2021-05-06 | 77 | mine | Robert G. |
| 79 | 1.3.3.2 | Bezpieczeństwo | 4d | 2021-05-07 | 2021-05-12 | 78 | mine | Robert G. |

| ID | WBS | Task | Duration | Start | Finish | Predecessors | Constraint | Deadline | Calendar | Resources |
| --- | --- | --- | --- | --- | --- | --- | --- | --- | --- | --- |
| 80 | 1.3.3.3 | **Implementacja modułów Front-end** | 9d? | 2021-05-13 | 2021-05-17 |  |  |  |  |  |
| 81 | 1.3.3.3.1 | Szablony widoków | 3d? | 2021-05-13 | 2021-05-17 | 79 |  |  | mine | Robert G. |
| 82 | 1.3.4 | **Wdrożenie systemu** | 9d? | 2021-05-18 | 2021-05-20 |  |  |  |  |  |
| 83 | 1.3.4.1 | Wybór hostingu | 1d? | 2021-05-18 | 2021-05-18 | 81 |  |  | mine | Robert G. |
| 84 | 1.3.4.2 | Konfiguracja bazy danych | 1d? | 2021-05-19 | 2021-05-19 | 83 |  |  | mine | Robert G. |
| 85 | 1.3.4.3 | Przeniesienie danych | 1d? | 2021-05-20 | 2021-05-20 | 84 |  |  | mine | Robert G. |
| 86 | 1.4 | **Testowanie systemu** | 41d? | 2021-05-18 | 2021-06-01 |  | start no earlier than 2021-04-20 |  |  |  |
| 87 | 1.4.1 | Testy funkcjonalne | 3d? | 2021-05-18 | 2021-05-20 | 81 |  |  | mine | Robert G. |
| 88 | 1.4.2 | Testy integracyjne | 3d? | 2021-05-21 | 2021-05-25 | 87 |  |  | mine | Robert G. |
| 89 | 1.4.3 | Testy akceptacyjne | 1d? | 2021-05-26 | 2021-05-26 | 88 | start no earlier than 2021-04-26 |  | mine | Robert G. |
| 90 | 1.4.4 | Testy zabezpieczeń | 2d? | 2021-05-27 | 2021-05-28 | 89 |  |  | mine | Robert G. |
| 91 | 1.4.5 | Wprowadzenie poprawek | 2d | 2021-05-31 | 2021-06-01 | 90 |  |  | mine | Robert G. |
| 92 | 1.5 | **Wnioski** | 2.5d? | 2021-06-02 | 2021-06-04 |  |  |  | mine |  |
| 93 | 1.5.1 | Odniesienie do tematu pracy | 1d? | 2021-06-02 | 2021-06-02 | 9, 85, 91 | start no earlier than 2021-05-03 |  | mine | Robert G. |
| 94 | 1.5.2 | **Ocena bieżącego stanu systemu** | 1d? | 2021-06-03 | 2021-06-03 |  |  |  | mine |  |
| 95 | 1.5.2.1 | Analiza zrealizowanych funkcjonalności | 0.5d? | 2021-06-03 | 2021-06-03 | 93 |  |  | mine | Robert G. |
| 96 | 1.5.2.2 | Analiza funkcjonalności niezrealizowanych | 0.5d? | 2021-06-03 | 2021-06-03 | 95 |  |  | mine | Robert G. |
| 97 | 1.5.3 | Kierunki dalszego rozwoju systemu | 0.5d? | 2021-06-04 | 2021-06-04 | 96 |  |  | mine | Robert G. |
| 98 | 1.6 | **Załączniki** | 22d? | 2021-05-14 | 2021-06-14 |  | start no earlier than 2021-05-14 |  | mine |  |
| 99 | 1.6.1 | Bibliografia | 0.5d? | 2021-05-14 | 2021-05-14 | 17 |  |  | mine | Robert G. |
| 100 | 1.6.2 | Specyfikacja wymagań | 1d? | 2021-05-14 | 2021-05-17 | 99 |  |  | mine | Robert G. |
| 101 | 1.6.3 | Dokumentacja systemu | 4d? | 2021-05-17 | 2021-05-21 | 100 |  |  | mine | Robert G. |
| 102 | 1.6.4 | Dokumentacja wdrożeniowa | 2d? | 2021-05-21 | 2021-05-25 | 101 |  |  | mine | Robert G. |
| 103 | 1.6.5 | Dokumentacja powdrożeniowa | 2d? | 2021-06-10 | 2021-06-14 | 106, 102, 9 |  | 2021-05-31 | mine | Robert G. |

| ID | WBS | Task | Duration | Start | Finish | Predecessors | Constraint | Calendar | Resources |
| --- | --- | --- | --- | --- | --- | --- | --- | --- | --- |
| 104 | 1.6.6 | **Istrukcja użytkowania** | 6.5d? | 2021-06-04 | 2021-06-14 |  |  | mine |  |
| 105 | 1.6.6.1 | Instrukcja ucznia | 3d? | 2021-06-04 | 2021-06-09 | 97 |  | mine | Robert G. |
| 106 | 1.6.6.2 | Instrukcja nauczyciela | 1d? | 2021-06-09 | 2021-06-10 | 105 |  | mine | Robert G. |
| 107 | 1.6.6.3 | Oddanie pracy dyplomowej | 0d? | 2021-06-14 | 2021-06-14 | 85, 103 | start no earlier than 2021-06-14 | mine |  |
